# Сайт IT компании

Schedule from MS Project, 2021-03-01 to 2021-08-25, status date 2021-05-31, costs in ₽, A marks actual dates.
Разработка сайта
«КонсалтингУльтра»

## Calendars

- Календарь 1: Mon-Fri 09:00-13:00, 14:00-18:00; Sat-Sun off. Exceptions (off unless hours are given): 2021-03-08 (Международный женский день), 2021-05-03 (Праздник весны и труда), 2021-05-10 (День победы), 2021-06-14 (День России).

## Resources

| Resource | Group | Rate |
| --- | --- | --- |
| Генеральный спонсор | Менеджмент | 350 |
| Бухгалтер | Менеджмент | 187.5 |
| Секретарь | Менеджмент | 75 |
| Руководитель проекта от Исполнителя | Менеджмент | 225 |
| Руководитель проекта от Заказчика | Менеджмент | 225 |
| Маркетолог | Проектная | 135 |
| SEO-специалист | Проектная | 63 |
| Программист | Проектная | 125 |
| Верстальщик | Проектная | 110 |
| Расходные материалы | Материалы | 2000 |
| Компьютеры | Материалы | 20000 |
| Канцелярия | Материалы | 500 |
| Программист+ | Проектная | 135 |

## Schedule

| ID | WBS | Task | Type | Duration | Start | Finish | Predecessors | Complete | Remaining | Baseline start | Baseline finish | Baseline duration | Total slack | Constraint | Resources | Work | Actual work | Cost | Baseline cost | Actual cost | Text1 |
| --- | --- | --- | --- | --- | --- | --- | --- | --- | --- | --- | --- | --- | --- | --- | --- | --- | --- | --- | --- | --- | --- |
| 1 | 1 | **РАЗРАБОТКА САЙТА Калякин** |  | 123.86d | 2021-03-01 A | 2021-08-25 |  | 45% | 68.55d | 2021-03-01 | 2021-08-25 | 123.86d | 0d |  | Генеральный спонсор; Канцелярия [2000%]; Компьютеры [1500%]; Расходные материалы [1000%] | 7142.06h | 2564.84h | 3,029,501.17 | 3,029,501.17 | 746,501.36 |  |
| 2 | 1.1 | НАЧАЛО РАБОТ | milestone | 0d | 2021-03-01 A | 2021-03-01 A |  | 100% |  | 2021-03-01 | 2021-03-01 | 0d |  |  |  |  |  |  |  |  |  |
| 3 | 1.2 | **ЭТАП I. ПРЕДПРОЕКТНОЕ ИССЛЕДОВАНИЕ** |  | 46d | 2021-03-01 A | 2021-05-05 | 2 | 99% | 0d | 2021-03-01 | 2021-05-05 | 46d | 0d |  | Руководитель проекта от Исполнителя; Руководитель проекта от Заказчика; Секретарь | 2255.5h | 1978.29h | 324,891.75 | 324,891.75 | 276,379.12 |  |
| 4 | 1.2.1 | Разработать план работ по проекту |  | 20d | 2021-03-01 A | 2021-03-29 A |  | 100% |  | 2021-03-01 | 2021-03-29 | 20d |  |  |  | 40h | 40h |  |  |  |  |
| 5 | 1.2.2 | Разработать предварительный бюджет |  | 3d | 2021-03-01 A | 2021-03-03 A |  | 100% |  | 2021-03-01 | 2021-03-03 | 3d |  |  | Бухгалтер | 35h | 35h | 6,562.5 | 6,562.5 | 6,562.5 |  |
| 6 | 1.2.3 | Сформировать команду проекта |  | 5d | 2021-03-01 A | 2021-03-05 A |  | 100% |  | 2021-03-01 | 2021-03-05 | 5d |  |  |  | 160h | 160h |  |  |  |  |
| 7 | 1.2.4 | **Анализ сайтов конкурентов** |  | 20d | 2021-03-30 A | 2021-04-26 A | 4, 5, 6 | 100% |  | 2021-03-30 | 2021-04-26 | 20d |  |  |  | 704h | 704h | 95,040 | 95,040 | 95,040 |  |
| 8 | 1.2.4.1 | Сайт 1 |  | 9d | 2021-03-30 A | 2021-04-09 A | 4, 5, 6 | 100% |  | 2021-03-30 | 2021-04-09 | 9d |  |  | Маркетолог [200%] | 144h | 144h | 19,440 | 19,440 | 19,440 |  |
| 9 | 1.2.4.2 | Сайт 2 |  | 3d | 2021-03-30 A | 2021-04-01 A | 4, 5, 6 | 100% |  | 2021-03-30 | 2021-04-01 | 3d |  |  | Маркетолог [300%] | 80h | 80h | 10,800 | 10,800 | 10,800 |  |
| 10 | 1.2.4.3 | Сайт 3 |  | 5d | 2021-03-31 A | 2021-04-09 A | 4, 5, 6 | 100% |  | 2021-03-31 | 2021-04-09 | 5d |  | start no earlier than 2021-03-31 | Маркетолог [350%] | 160h | 160h | 21,600 | 21,600 | 21,600 |  |
| 11 | 1.2.4.4 | Сайт 4 |  | 4d | 2021-04-01 A | 2021-04-19 A | 4, 5, 6 | 100% |  | 2021-04-01 | 2021-04-19 | 4d |  | start no earlier than 2021-04-01 | Маркетолог [400%] | 120h | 120h | 16,200 | 16,200 | 16,200 |  |
| 12 | 1.2.4.5 | Сайт 5 |  | 10d | 2021-03-30 A | 2021-04-26 A | 4, 5, 6 | 100% |  | 2021-03-30 | 2021-04-26 | 10d |  |  | Маркетолог [250%] | 200h | 200h | 27,000 | 27,000 | 27,000 |  |
| 13 | 1.2.5 | Разработать модель as-is |  | 2d | 2021-04-27 A | 2021-04-28 A | 8, 9, 10, 11, 12 | 100% |  | 2021-04-27 | 2021-04-28 | 2d |  |  | Маркетолог [400%]; SEO-специалист [200%] | 120h | 120h | 14,472 | 14,472 | 14,472 |  |
| 14 | 1.2.6 | Сформировать требования к сайту |  | 2d | 2021-04-29 A | 2021-04-30 A | 13 | 100% |  | 2021-04-29 | 2021-04-30 | 2d |  |  | Маркетолог [400%] | 80h | 80h | 13,656 | 13,656 | 13,656 |  |
| 15 | 1.2.7 | Утвердить документы и внести в библиотеку проекта |  | 2d | 2021-04-30 A | 2021-05-05 A | 14 | 100% |  | 2021-04-30 | 2021-05-05 | 2d |  |  | Маркетолог [50%]; Бухгалтер [50%] | 15.5h | 15.5h | 2,486.25 | 2,486.25 | 2,486.25 |  |
| 16 | 1.3 | КОНЕЦ I ЭТАПА | milestone | 0d | 2021-05-05 A | 2021-05-05 A | 15 | 100% |  | 2021-05-05 | 2021-05-05 | 0d |  |  |  |  |  |  |  |  |  |
| 17 | 1.4 | **ЭТАП II. ПРОЕКТИРОВАНИЕ САЙТА** |  | 13d | 2021-05-06 A | 2021-05-25 |  | 54% | 6d | 2021-05-06 | 2021-05-25 | 13d | 0d |  | Руководитель проекта от Исполнителя; Руководитель проекта от Заказчика; Секретарь | 525h | 231.1h | 81,507 | 81,507 | 32,314.5 |  |
| 18 | 1.4.1 | Разработать техническое задание |  | 3d | 2021-05-06 A | 2021-05-11 A | 16 | 100% |  | 2021-05-06 | 2021-05-11 | 3d |  |  | Маркетолог [400%]; SEO-специалист [200%] | 120h | 120h | 14,472 | 14,472 | 14,472 |  |
| 19 | 1.4.2 | Разработать структуры сайта |  | 8d | 2021-05-12 A | 2021-05-21 | 18 | 50% | 4d | 2021-05-12 | 2021-05-21 | 8d | 0d |  | Маркетолог [200%] | 80h | 40h | 10,800 | 10,800 | 5,400 |  |
| 20 | 1.4.3 | Утвердить документы и внести в библиотеку проекта |  | 2d | 2021-05-24 | 2021-05-25 | 19 |  |  | 2021-05-24 | 2021-05-25 | 2d | 0d |  | Маркетолог | 16h |  | 2,160 | 2,160 |  |  |
| 21 | 1.5 | КОНЕЦ II ЭТАПА | milestone | 0d | 2021-05-25 | 2021-05-25 | 20 |  |  | 2021-05-25 | 2021-05-25 | 0d | 0d |  |  |  |  |  |  |  |  |
| 22 | 1.6 | **ЭТАП III. РАЗРАБОТКА САЙТА** |  | 18.36d | 2021-05-26 | 2021-06-22 |  |  |  | 2021-05-26 | 2021-06-22 | 18.36d | 0d |  | Руководитель проекта от Заказчика; Руководитель проекта от Исполнителя; Секретарь | 989.56h |  | 1,637,512.42 | 1,637,512.42 |  |  |
| 23 | 1.6.1 | Разработать рабочую документацию |  | 10d | 2021-05-26 | 2021-06-08 | 21 |  |  | 2021-05-26 | 2021-06-08 | 10d | 0d |  | SEO-специалист [200%] | 160h |  | 10,080 | 10,080 |  |  |
| 24 | 1.6.2 | Веб-дизайн сайта |  | 1.37d | 2021-06-08 | 2021-06-10 | 23 |  |  | 2021-06-08 | 2021-06-10 | 1.37d | 0d |  | Маркетолог [300%]; Верстальщик; Бухгалтер | 40h |  | 1,505,620 | 1,505,620 |  | Стоимость программного обеспечения |
| 25 | 1.6.3 | Верстка страниц сайта |  | 3.13d | 2021-06-10 | 2021-06-16 | 24 |  |  | 2021-06-10 | 2021-06-16 | 3.13d | 2.11d |  | Маркетолог [350%]; Верстальщик; Программист; Программист+ | 160h |  | 20,738.09 | 20,738.09 |  |  |
| 26 | 1.6.4 | Программирование сайта |  | 5.24d | 2021-06-10 | 2021-06-18 | 24 |  |  | 2021-06-10 | 2021-06-18 | 5.24d | 0d |  | Маркетолог [250%]; Верстальщик; Программист; Программист+ | 160h |  | 20,582.2 | 20,582.2 |  |  |
| 27 | 1.6.5 | Тестирование и отладка |  | 2d | 2021-06-18 | 2021-06-22 | 26, 25 |  |  | 2021-06-18 | 2021-06-22 | 2d | 0d |  | Верстальщик; Маркетолог | 32h |  | 3,920 | 3,920 |  |  |
| 28 | 1.7 | КОНЕЦ III ЭТАПА | milestone | 0d | 2021-06-22 | 2021-06-22 | 27 |  |  | 2021-06-22 | 2021-06-22 | 0d | 0d |  |  |  |  |  |  |  |  |

| ID | WBS | Task | Type | Duration | Start | Finish | Predecessors | Baseline start | Baseline finish | Baseline duration | Total slack | Resources | Work | Cost | Baseline cost |
| --- | --- | --- | --- | --- | --- | --- | --- | --- | --- | --- | --- | --- | --- | --- | --- |
| 29 | 1.8 | **ЭТАП IV. ЗАПУСК САЙТА В ЭКСПЛУАТАЦИЮ** |  | 32d | 2021-06-22 | 2021-08-05 |  | 2021-06-22 | 2021-08-05 | 32d | 0d | Руководитель проекта от Заказчика; Руководитель проекта от Исполнителя; Секретарь | 1740h | 255,320 | 255,320 |
| 30 | 1.8.1 | Создание контента |  | 30d | 2021-06-22 | 2021-08-03 | 28 | 2021-06-22 | 2021-08-03 | 30d | 0d | Маркетолог [200%]; Верстальщик [150%] | 840h | 104,400 | 104,400 |
| 31 | 1.8.2 | SEO-оптимизация |  | 5d | 2021-06-22 | 2021-06-29 | 28 | 2021-06-22 | 2021-06-29 | 5d | 25d | Маркетолог; Верстальщик [50%]; Программист | 100h | 12,600 | 12,600 |
| 32 | 1.8.3 | Утверждение документации |  | 2d | 2021-08-03 | 2021-08-05 | 30, 31 | 2021-08-03 | 2021-08-05 | 2d | 0d | Верстальщик; Маркетолог | 32h | 3,920 | 3,920 |
| 33 | 1.9 | КОНЕЦ IV ЭТАПА | milestone | 0d | 2021-08-05 | 2021-08-05 | 32 | 2021-08-05 | 2021-08-05 | 0d | 0d |  |  |  |  |
| 34 | 1.10 | **ЭТАП V. СОПРОВОЖДЕНИЕ САЙТА** |  | 14.5d | 2021-08-05 | 2021-08-25 | 33 | 2021-08-05 | 2021-08-25 | 14.5d | 0d | Руководитель проекта от Заказчика; Руководитель проекта от Исполнителя; Секретарь | 836h | 121,670 | 121,670 |
| 35 | 1.10.1 | Провести работы по доработке и устранению недостатков сайта |  | 12.5d | 2021-08-05 | 2021-08-23 | 33 | 2021-08-05 | 2021-08-23 | 12.5d | 0d | Верстальщик [50%]; Программист; Программист+ | 200h | 25,250 | 25,250 |
| 36 | 1.10.2 | Провести работы по анализу сайта |  | 10d | 2021-08-05 | 2021-08-19 | 33 | 2021-08-05 | 2021-08-19 | 10d | 2.5d | Верстальщик; Программист; Маркетолог | 240h | 29,600 | 29,600 |
| 37 | 1.10.3 | Утверждение документации |  | 2d | 2021-08-23 | 2021-08-25 | 35, 36 | 2021-08-23 | 2021-08-25 | 2d | 0d | Верстальщик; Маркетолог; Программист | 48h | 5,920 | 5,920 |
| 38 | 1.11 | КОНЕЦ V ЭТАПА | milestone | 0d | 2021-08-25 | 2021-08-25 | 37 | 2021-08-25 | 2021-08-25 | 0d | 0d |  |  |  |  |
| 39 | 1.12 | ЗАВЕРШЕНИЕ РАБОТ | milestone | 0d | 2021-08-25 | 2021-08-25 | 38 | 2021-08-25 | 2021-08-25 | 0d | 0d |  |  |  |  |
