# Сайт IT компании

Schedule from MS Project, 2021-03-01 to 2021-08-09, costs in ₽.
Разработка сайта
«КонсалтингУльтра»

## Calendars

- Календарь 1: Mon-Fri 09:00-13:00, 14:00-18:00; Sat-Sun off. Exceptions (off unless hours are given): 2021-03-08 (Международный женский день), 2021-05-03 (Праздник весны и труда), 2021-05-10 (День победы), 2021-06-14 (День России).

## Resources

| Resource | Group | Rate |
| --- | --- | --- |
| Генеральный спонсор | Менеджмент | 350 |
| Бухгалтер | Менеджмент | 187.5 |
| Секретарь | Менеджмент | 75 |
| Руководитель проекта от Исполнителя | Менеджмент | 225 |
| Руководитель проекта от Заказчика | Менеджмент | 225 |
| Маркетолог | Проектная | 135 |
| SEO-специалист | Проектная | 63 |
| Программист | Проектная | 125 |
| Верстальщик | Проектная | 110 |
| Расходные материалы | Материалы | 2000 |
| Компьютеры | Материалы | 20000 |
| Канцелярия | Материалы | 500 |

## Schedule

| ID | WBS | Task | Type | Duration | Start | Finish | Predecessors | Total slack | Resources | Work | Cost | Text1 |
| --- | --- | --- | --- | --- | --- | --- | --- | --- | --- | --- | --- | --- |
| 1 | 1 | **РАЗРАБОТКА САЙТА Калякин** |  | 111.44d | 2021-03-01 | 2021-08-09 |  | 0d | Генеральный спонсор; Канцелярия [2000%]; Компьютеры [1500%]; Расходные материалы [1000%] | 6984.16h | 2,987,781.49 |  |
| 2 | 1.1 | НАЧАЛО РАБОТ | milestone | 0d | 2021-03-01 | 2021-03-01 |  | 0d |  |  |  |  |
| 3 | 1.2 | **ЭТАП I. ПРЕДПРОЕКТНОЕ ИССЛЕДОВАНИЕ** |  | 37.5d | 2021-03-01 | 2021-04-22 | 2 | 0d | Руководитель проекта от Исполнителя; Руководитель проекта от Заказчика; Секретарь | 2051.5h | 286,335.75 |  |
| 4 | 1.2.1 | Разработать план работ по проекту |  | 20d | 2021-03-01 | 2021-03-29 |  | 0d |  | 40h |  |  |
| 5 | 1.2.2 | Разработать предварительный бюджет |  | 4.38d | 2021-03-01 | 2021-03-05 |  | 15.5d | Бухгалтер | 35h | 6,562.5 |  |
| 6 | 1.2.3 | Сформировать команду проекта |  | 5d | 2021-03-01 | 2021-03-05 |  | 15d |  | 160h |  |  |
| 7 | 1.2.4 | **Анализ сайтов конкурентов** |  | 10d | 2021-03-30 | 2021-04-12 | 4, 5, 6 | 0d |  | 704h | 95,040 |  |
| 8 | 1.2.4.1 | Сайт 1 |  | 9d | 2021-03-30 | 2021-04-09 | 4, 5, 6 | 1d | Маркетолог [200%] | 144h | 19,440 |  |
| 9 | 1.2.4.2 | Сайт 2 |  | 3.33d | 2021-03-30 | 2021-04-02 | 4, 5, 6 | 6.67d | Маркетолог [300%] | 80h | 10,800 |  |
| 10 | 1.2.4.3 | Сайт 3 |  | 5.71d | 2021-03-30 | 2021-04-06 | 4, 5, 6 | 4.29d | Маркетолог [350%] | 160h | 21,600 |  |
| 11 | 1.2.4.4 | Сайт 4 |  | 3.75d | 2021-03-30 | 2021-04-02 | 4, 5, 6 | 6.25d | Маркетолог [400%] | 120h | 16,200 |  |
| 12 | 1.2.4.5 | Сайт 5 |  | 10d | 2021-03-30 | 2021-04-12 | 4, 5, 6 | 0d | Маркетолог [250%] | 200h | 27,000 |  |
| 13 | 1.2.5 | Разработать модель as-is |  | 3d | 2021-04-13 | 2021-04-15 | 8, 9, 10, 11, 12 | 0d | Маркетолог [400%]; SEO-специалист [200%] | 120h | 14,472 |  |
| 14 | 1.2.6 | Сформировать требования к сайту |  | 2.5d | 2021-04-16 | 2021-04-20 | 13 | 0d | Маркетолог [400%] | 80h | 10,800 |  |
| 15 | 1.2.7 | Утвердить документы и внести в библиотеку проекта |  | 2d | 2021-04-20 | 2021-04-22 | 14 | 0d | Маркетолог [50%]; Бухгалтер [50%] | 15.5h | 2,486.25 |  |
| 16 | 1.3 | КОНЕЦ I ЭТАПА | milestone | 0d | 2021-04-22 | 2021-04-22 | 15 | 0d |  |  |  |  |
| 17 | 1.4 | **ЭТАП II. ПРОЕКТИРОВАНИЕ САЙТА** |  | 10d | 2021-04-22 | 2021-05-07 |  | 0d | Руководитель проекта от Исполнителя; Руководитель проекта от Заказчика; Секретарь | 453h | 68,907 |  |
| 18 | 1.4.1 | Разработать техническое задание |  | 3d | 2021-04-22 | 2021-04-27 | 16 | 0d | Маркетолог [400%]; SEO-специалист [200%] | 120h | 14,472 |  |
| 19 | 1.4.2 | Разработать структуры сайта |  | 5d | 2021-04-27 | 2021-05-05 | 18 | 0d | Маркетолог [200%] | 80h | 10,800 |  |
| 20 | 1.4.3 | Утвердить документы и внести в библиотеку проекта |  | 2d | 2021-05-05 | 2021-05-07 | 19 | 0d | Маркетолог | 16h | 2,160 |  |
| 21 | 1.5 | КОНЕЦ II ЭТАПА | milestone | 0d | 2021-05-07 | 2021-05-07 | 20 | 0d |  |  |  |  |
| 22 | 1.6 | **ЭТАП III. РАЗРАБОТКА САЙТА** |  | 17.44d | 2021-05-07 | 2021-06-02 |  | 0d | Руководитель проекта от Заказчика; Руководитель проекта от Исполнителя; Секретарь | 967.66h | 1,633,298.74 |  |
| 23 | 1.6.1 | Разработать рабочую документацию |  | 10d | 2021-05-07 | 2021-05-24 | 21 | 0d | SEO-специалист [200%] | 160h | 10,080 |  |
| 24 | 1.6.2 | Веб-дизайн сайта |  | 1.25d | 2021-05-24 | 2021-05-25 | 23 | 0d | Маркетолог [300%]; Верстальщик; Бухгалтер | 40h | 1,505,620 | Стоимость программного обеспечения |
| 25 | 1.6.3 | Верстка страниц сайта |  | 3.64d | 2021-05-25 | 2021-05-31 | 24 | 0.81d | Маркетолог [350%]; Верстальщик; Программист [200%] | 160h | 20,581.81 |  |
| 26 | 1.6.4 | Программирование сайта |  | 4.44d | 2021-05-25 | 2021-05-31 | 24 | 0d | Маркетолог [250%]; Верстальщик; Программист [200%] | 160h | 20,355.56 |  |
| 27 | 1.6.5 | Тестирование и отладка |  | 2d | 2021-05-31 | 2021-06-02 | 26, 25 | 0d | Верстальщик; Маркетолог | 32h | 3,920 |  |
| 28 | 1.7 | КОНЕЦ III ЭТАПА | milestone | 0d | 2021-06-02 | 2021-06-02 | 27 | 0d |  |  |  |  |

| ID | WBS | Task | Type | Duration | Start | Finish | Predecessors | Total slack | Resources | Work | Cost |
| --- | --- | --- | --- | --- | --- | --- | --- | --- | --- | --- | --- |
| 29 | 1.8 | **ЭТАП IV. ЗАПУСК САЙТА В ЭКСПЛУАТАЦИЮ** |  | 32d | 2021-06-02 | 2021-07-19 |  | 0d | Руководитель проекта от Заказчика; Руководитель проекта от Исполнителя; Секретарь | 1880h | 270,720 |
| 30 | 1.8.1 | Создание контента |  | 30d | 2021-06-02 | 2021-07-15 | 28 | 0d | Маркетолог [200%]; Верстальщик [200%] | 960h | 117,600 |
| 31 | 1.8.2 | SEO-оптимизация |  | 5d | 2021-06-02 | 2021-06-09 | 28 | 25d | Маркетолог; Верстальщик; Программист | 120h | 14,800 |
| 32 | 1.8.3 | Утверждение документации |  | 2d | 2021-07-15 | 2021-07-19 | 30, 31 | 0d | Верстальщик; Маркетолог | 32h | 3,920 |
| 33 | 1.9 | КОНЕЦ IV ЭТАПА | milestone | 0d | 2021-07-19 | 2021-07-19 | 32 | 0d |  |  |  |
| 34 | 1.10 | **ЭТАП V. СОПРОВОЖДЕНИЕ САЙТА** |  | 14.5d | 2021-07-19 | 2021-08-09 | 33 | 0d | Руководитель проекта от Заказчика; Руководитель проекта от Исполнителя; Секретарь | 836h | 119,920 |
| 35 | 1.10.1 | Провести работы по доработке и устранению недостатков сайта |  | 12.5d | 2021-07-19 | 2021-08-05 | 33 | 0d | Верстальщик; Программист [200%] | 200h | 23,500 |
| 36 | 1.10.2 | Провести работы по анализу сайта |  | 10d | 2021-07-19 | 2021-08-02 | 33 | 2.5d | Верстальщик [150%]; Программист; Маркетолог | 240h | 29,600 |
| 37 | 1.10.3 | Утверждение документации |  | 2d | 2021-08-05 | 2021-08-09 | 35, 36 | 0d | Верстальщик; Маркетолог; Программист | 48h | 5,920 |
| 38 | 1.11 | КОНЕЦ V ЭТАПА | milestone | 0d | 2021-08-09 | 2021-08-09 | 37 | 0d |  |  |  |
| 39 | 1.12 | ЗАВЕРШЕНИЕ РАБОТ | milestone | 0d | 2021-08-09 | 2021-08-09 | 38 | 0d |  |  |  |
